# Project crew & material

Schedule from MS Project, 2024-11-10 to 2025-06-11, status date 2024-11-08, costs in $.

## Calendars

- Standard: Mon-Fri 08:00-12:00, 13:00-17:00; Sat-Sun off.

## Resources

| Resource | Unit | Rate |
| --- | --- | --- |
| CREW01 |  | 640 |
| CREW02 |  | 820 |
| CREW03 |  | 1170 |
| CREW04 |  | 1810 |
| CREW05 |  | 1840 |
| CREW06 |  | 2770 |
| CREW07 |  | 370 |
| CREW08 |  | 1470 |
| CREW09 |  | 790 |
| CREW10 |  | 1870 |
| CREW11 |  | 540 |
| CREW12 |  | 590 |
| M01 | m2 | 30 |
| M02 | m2 | 40 |
| M03 | ton | 740 |
| M04 | m3 | 110 |
| M05 | m2 | 40 |
| M06 | m3 | 410 |
| M07 | m3 | 270 |
| M08 | m3 | 400 |
| M09 | m2 | 40 |
| M10 | m2 | 70 |
| M11 | Each | 1200 |
| M12 | m2 | 40 |
| M13 | Each | 70 |

## Schedule

| ID | WBS | Task | Duration | Start | Finish | Predecessors | Total slack | Free slack | Resources | Work | Cost |
| --- | --- | --- | --- | --- | --- | --- | --- | --- | --- | --- | --- |
| 1 | 1 | **Project** | 154d | 2024-11-10 | 2025-06-11 |  |  |  |  | 1728h | 2,237,450 |
| 2 | 1.1 | Layout Act | 2d | 2024-11-11 | 2024-11-12 |  | 0d |  | CREW01 | 16h | 10,240 |
| 3 | 1.2 | Excavate Foundation & Utility Trenches Act | 12d | 2024-11-13 | 2024-11-28 | 2 | 0d |  | CREW04; M12 [120 m2] | 96h | 178,560 |
| 4 | 1.3 | Forms, Footing Act | 8d | 2024-11-29 | 2024-12-10 | 3 | 0d |  | CREW03 | 64h | 74,880 |
| 5 | 1.4 | Reinforcing,Light,Footing Act | 7d | 2024-12-11 | 2024-12-19 | 4 | 0d |  | CREW12; M02 [2 m2] | 56h | 33,120 |
| 6 | 1.5 | Placing ConCREWete, Direct Chute Act | 2d | 2024-12-20 | 2024-12-23 | 5 | 0d |  | CREW06; M04 [250 m3] | 16h | 71,820 |
| 7 | 1.6 | Removal of Forms, Footing Act | 2d | 2024-12-24 | 2024-12-25 | 6 | 0d |  | CREW11 | 16h | 8,640 |
| 8 | 1.7 | Forms, Walls Act | 5d | 2024-12-26 | 2025-01-01 | 7 | 0d |  | CREW01; M02 [75 m2] | 40h | 30,250 |
| 9 | 1.8 | Reinforcing, Light, Walls Act | 3d | 2025-01-02 | 2025-01-06 | 8 | 0d |  | CREW12; M03 [2 ton] | 24h | 15,640 |
| 10 | 1.9 | Placing ConCREWete, Walls Act | 3d | 2025-01-07 | 2025-01-09 | 9 | 0d |  | CREW01; CREW06; M04 [150 m3] | 48h | 98,340 |
| 11 | 1.10 | Removal of Forms, Walls Act | 2d | 2025-01-10 | 2025-01-13 | 10 | 0d |  | CREW01; M10 [300 m2] | 16h | 31,240 |
| 12 | 1.11 | Insulate and Waterproof of Foundation & Walls | 5d | 2025-01-14 | 2025-01-20 | 7, 11 | 0d |  | CREW09; M09 [150 m2] | 40h | 37,600 |
| 13 | 1.12 | Back Fill Act | 6d | 2025-01-21 | 2025-01-28 | 12 | 0d |  | CREW05 | 48h | 88,320 |
| 14 | 1.13 | Placing ConCREWete, Floor Act | 3d | 2025-01-29 | 2025-01-31 | 13 | 0d |  | CREW02; M04 [100 m3] | 24h | 30,680 |
| 15 | 1.14 | Wood Columns 100mm * 150mm Act | 3d | 2025-02-03 | 2025-02-05 | 14 | 0d |  | CREW07; M08 [75 m3] | 24h | 38,880 |
| 16 | 1.15 | Stud Walla & Wooden Act | 5d | 2025-02-06 | 2025-02-12 | 15 | 0d |  | CREW01; CREW10; M06 [130 m3] | 80h | 153,700 |
| 17 | 1.16 | Floor Joists & CREWoss Bridges Act | 6d | 2025-02-13 | 2025-02-20 | 16 | 0d |  | CREW07; M07 [205 m3] | 48h | 73,110 |
| 18 | 1.17 | Roof Trusses & Sheathing Act | 9d | 2025-02-06 | 2025-02-18 | 15 | 41d | 0d | CREW05; M10 [45 m2] | 72h | 135,630 |
| 19 | 1.18 | Subfloor 19-mm Thick Act | 11d | 2025-02-21 | 2025-03-07 | 17 | 0d |  | CREW05; M09 [105 m2] | 88h | 166,120 |
| 20 | 1.19 | Ductwork Act | 11d | 2025-02-19 | 2025-03-10 | 18 | 41d | 0d | CREW01; M04 [16 m3] | 88h | 58,080 |
| 21 | 1.20 | Exterior Walls Insulation Act | 5d | 2025-03-11 | 2025-03-17 | 16, 20 | 41d | 1d | CREW03; M12 [175 m2] | 40h | 53,800 |
| 22 | 1.21 | Electrical System Act | 7d | 2025-03-10 | 2025-03-18 | 19 | 21d | 0d | CREW09; M01 [100 m2] | 56h | 47,240 |
| 23 | 1.22 | HVAC Act | 9d | 2025-03-19 | 2025-03-31 | 21, 22 | 52d |  | M12 [40 m2] |  | 1,600 |
| 24 | 1.23 | Install Plywood Underlay Act | 4d | 2025-03-10 | 2025-03-13 | 19 | 0d |  | CREW11 | 32h | 17,280 |
| 25 | 1.24 | Install Stairs Act | 6d | 2025-02-06 | 2025-02-13 | 15 | 20d |  | M11 [58 Each] |  | 69,600 |
| 26 | 1.25 | Plumbing Fixture Act | 4d | 2025-03-14 | 2025-03-19 | 24 | 57d |  |  |  |  |
| 27 | 1.26 | Window Installation Act | 3d | 2025-02-21 | 2025-02-25 | 17 | 26d |  | CREW01 | 24h | 15,360 |
| 28 | 1.27 | Install Tiles and Ciremic Act | 14d | 2025-03-14 | 2025-04-02 | 24, 25 | 0d |  | CREW01; M11 [80 Each] | 112h | 167,680 |
| 29 | 1.28 | Install Receptacles & Switches Act | 8d | 2025-04-03 | 2025-04-14 | 22 | 21d | 0d | CREW01; M03 [20 ton] | 64h | 55,760 |
| 30 | 1.29 | Doors Installation Act | 6d | 2025-04-03 | 2025-04-10 | 27, 28 | 0d |  | CREW08; M12 [270 m2] | 48h | 81,360 |
| 31 | 1.30 | Drywall Installation Act | 4d | 2025-02-13 | 2025-02-18 | 16 | 46d |  | CREW01; M13 [250 Each] | 32h | 37,980 |
| 32 | 1.31 | Cabinets & Counters Act | 9d | 2025-04-11 | 2025-04-23 | 30 | 0d |  | CREW12 | 72h | 42,480 |
| 33 | 1.32 | Exterior Brickwork Act | 10d | 2025-04-15 | 2025-04-28 | 21, 29 | 21d |  | CREW01; M05 [120 m2] | 80h | 56,000 |
| 34 | 1.33 | Wall Paint Act | 22d | 2025-04-28 | 2025-05-27 | 31, 32 | 0d |  | CREW01; M02 [50 m2] | 176h | 120,140 |
| 35 | 1.34 | Landscaping Act | 8d | 2025-05-28 | 2025-06-06 | 33, 34 | 0d |  | CREW01; M08 [200 m3] | 64h | 120,960 |
| 36 | 1.35 | Final Inspection & Hand Over Act | 3d | 2025-06-09 | 2025-06-11 | 26, 35 | 0d |  | CREW01 | 24h | 15,360 |
